# Implementación del CRM Predictivo y Retención Postventa — Essenza SPA

Schedule from MS Project XML, 2026-09-15 to 2027-01-15.
Essenza SPA

## Calendars

- Essenza - lunes a viernes con feriados: Mon-Fri 08:00-12:00, 13:00-17:00; Sat-Sun off. Exceptions (off unless hours are given): 2026-10-08 (Combate de Angamos), 2026-12-08 (Inmaculada Concepción), 2026-12-09 (Batalla de Ayacucho), 2026-12-25 (Navidad), 2027-01-01 (Año Nuevo).

## Resources

| Resource | Group |
| --- | --- |
| Director del proyecto | Equipo del proyecto |
| Analista funcional | Equipo del proyecto |
| Científico de datos | Equipo del proyecto |
| Desarrollador backend | Equipo del proyecto |
| Desarrollador frontend | Equipo del proyecto |
| QA y capacitación | Equipo del proyecto |
| Administradora | Essenza SPA |
| Dueña (patrocinadora) | Essenza SPA |

## Schedule

| ID | WBS | Task | Type | Duration | Start | Finish | Predecessors | Total slack | Free slack | Resources | Text1 |
| --- | --- | --- | --- | --- | --- | --- | --- | --- | --- | --- | --- |
| 1 | 1 | **Implementación del CRM Predictivo y Retención Postventa — Essenza SPA** |  | 84d | 2026-09-15 | 2027-01-15 |  |  |  |  |  |
| 2 | 1.1 | **Gestión del proyecto** |  | 84d | 2026-09-15 | 2027-01-15 |  |  |  |  |  |
| 3 | 1.1.1 | **EDT-1.1.01 · Acta de constitución y lanzamiento** |  | 3d | 2026-09-15 | 2026-09-17 |  |  |  |  | Director del proyecto |
| 4 | 1.1.1.1 | Redactar el acta de constitución con objetivos medibles |  | 1d | 2026-09-15 | 2026-09-15 |  |  |  | Director del proyecto | Director del proyecto |
| 5 | 1.1.1.2 | Identificar interesados y responsables |  | 1d | 2026-09-16 | 2026-09-16 | 4 |  |  | Director del proyecto | Director del proyecto |
| 6 | 1.1.1.3 | Preparar agenda y materiales del lanzamiento |  | 1d | 2026-09-17 | 2026-09-17 | 5 |  |  | Director del proyecto | Director del proyecto |
| 7 | 1.1.1.4 | H0 · Reunión de lanzamiento realizada | milestone | 0d | 2026-09-17 | 2026-09-17 | 6 |  |  |  | Director del proyecto |
| 8 | 1.1.2 | **EDT-1.1.02 · Plan para la dirección del proyecto** |  | 5d | 2026-09-30 | 2026-10-06 |  | 5d |  |  | Director del proyecto |
| 9 | 1.1.2.1 | Elaborar la línea base del alcance (EDT y diccionario) |  | 1d | 2026-09-30 | 2026-09-30 | 33 | 6d |  | Director del proyecto | Director del proyecto |
| 10 | 1.1.2.2 | Elaborar las líneas base de cronograma y costos |  | 1d | 2026-10-01 | 2026-10-01 | 9 | 6d |  | Director del proyecto | Director del proyecto |
| 11 | 1.1.2.3 | Integrar planes de involucramiento, comunicaciones, calidad, recursos y riesgos |  | 1d | 2026-10-02 | 2026-10-02 | 10 | 6d | 1d | Director del proyecto | Director del proyecto |
| 12 | 1.1.2.4 | Aprobar el plan con la patrocinadora |  | 1d | 2026-10-06 | 2026-10-06 | 11, 48 | 5d |  | Director del proyecto | Director del proyecto |
| 13 | 1.1.3 | **EDT-1.1.03 · Seguimiento y control** |  | 63d | 2026-10-07 | 2027-01-08 |  | 5d |  |  | Director del proyecto |
| 14 | 1.1.3.1 | Emitir el informe semanal de estado (SPI, CPI, riesgos) |  | 63d | 2026-10-07 | 2027-01-08 | 12 | 5d |  | Director del proyecto [10%] | Director del proyecto |
| 15 | 1.1.3.2 | Conducir el comité de control de cambios |  | 63d | 2026-10-07 | 2027-01-08 | 12 | 5d |  | Director del proyecto [10%] | Director del proyecto |
| 16 | 1.1.3.3 | Actualizar registros de riesgos, incidentes y cambios |  | 63d | 2026-10-07 | 2027-01-08 | 12 | 5d |  | Director del proyecto [10%] | Director del proyecto |
| 17 | 1.1.3.4 | Reevaluar la matriz de involucramiento en cada hito |  | 63d | 2026-10-07 | 2027-01-08 | 12 | 5d |  | Director del proyecto [10%] | Director del proyecto |
| 18 | 1.1.4 | **EDT-1.1.04 · Cierre del proyecto** |  | 3d | 2027-01-13 | 2027-01-15 |  |  |  |  | Director del proyecto |
| 19 | 1.1.4.1 | Elaborar el informe final de indicadores frente a objetivos |  | 1d | 2027-01-13 | 2027-01-13 | 173 |  |  | Director del proyecto | Director del proyecto |
| 20 | 1.1.4.2 | Consolidar las lecciones aprendidas |  | 1d | 2027-01-14 | 2027-01-14 | 19 |  |  | Director del proyecto | Director del proyecto |
| 21 | 1.1.4.3 | Archivar la documentación del proyecto |  | 1d | 2027-01-15 | 2027-01-15 | 20 |  |  | Director del proyecto | Director del proyecto |
| 22 | 1.1.4.4 | H5 · Acta de aceptación y cierre firmada | milestone | 0d | 2027-01-15 | 2027-01-15 | 21 |  |  |  | Director del proyecto |
| 23 | 1.2 | **Análisis y diseño** |  | 12d | 2026-09-18 | 2026-10-05 |  |  |  |  |  |
| 24 | 1.2.1 | **EDT-1.2.01 · Levantamiento AS-IS y requisitos** |  | 4d | 2026-09-18 | 2026-09-23 |  |  |  |  | Analista funcional |
| 25 | 1.2.1.1 | Entrevistar a la dueña, administradora, recepcionista y cosmiatras |  | 1d | 2026-09-18 | 2026-09-18 | 7 |  |  | Analista funcional; Administradora | Analista funcional, Administradora |
| 26 | 1.2.1.2 | Observar el registro de atenciones en el Excel |  | 1d | 2026-09-21 | 2026-09-21 | 25 |  |  | Analista funcional | Analista funcional |
| 27 | 1.2.1.3 | Modelar el flujo AS-IS e identificar puntos de dolor |  | 1d | 2026-09-22 | 2026-09-22 | 26 |  |  | Analista funcional | Analista funcional |
| 28 | 1.2.1.4 | Priorizar necesidades con la patrocinadora |  | 1d | 2026-09-23 | 2026-09-23 | 27 |  |  | Analista funcional | Analista funcional |

Notes:
- 14: Actividad de nivel de esfuerzo: se ejecuta de forma continua desde la aprobación del plan hasta el fin de la estabilización.
- 15: Actividad de nivel de esfuerzo: se ejecuta de forma continua desde la aprobación del plan hasta el fin de la estabilización.
- 16: Actividad de nivel de esfuerzo: se ejecuta de forma continua desde la aprobación del plan hasta el fin de la estabilización.
- 17: Actividad de nivel de esfuerzo: se ejecuta de forma continua desde la aprobación del plan hasta el fin de la estabilización.

| ID | WBS | Task | Type | Duration | Start | Finish | Predecessors | Total slack | Resources | Text1 |
| --- | --- | --- | --- | --- | --- | --- | --- | --- | --- | --- |
| 29 | 1.2.2 | **EDT-1.2.02 · Especificación de requisitos y trazabilidad** |  | 4d | 2026-09-24 | 2026-09-29 |  |  |  | Analista funcional |
| 30 | 1.2.2.1 | Redactar fichas de requisitos con criterios de aceptación |  | 1d | 2026-09-24 | 2026-09-24 | 28 |  | Analista funcional | Analista funcional |
| 31 | 1.2.2.2 | Diseñar el flujo TO-BE |  | 1d | 2026-09-25 | 2026-09-25 | 30 |  | Analista funcional | Analista funcional |
| 32 | 1.2.2.3 | Construir la matriz requisito – paquete – prueba |  | 1d | 2026-09-28 | 2026-09-28 | 31 |  | Analista funcional | Analista funcional |
| 33 | 1.2.2.4 | Validar y firmar los requisitos con la patrocinadora |  | 1d | 2026-09-29 | 2026-09-29 | 32 |  | Analista funcional | Analista funcional |
| 34 | 1.2.3 | **EDT-1.2.03 · Arquitectura y modelo de datos** |  | 4d | 2026-09-30 | 2026-10-05 |  |  |  | Desarrollador backend |
| 35 | 1.2.3.1 | Diseñar la arquitectura FastAPI – SQLite – React – modelo |  | 1d | 2026-09-30 | 2026-09-30 | 33 |  | Desarrollador backend | Desarrollador backend |
| 36 | 1.2.3.2 | Diseñar tablas de clientes, atenciones, predicciones y sincronización |  | 1d | 2026-10-01 | 2026-10-01 | 35 |  | Desarrollador backend | Desarrollador backend |
| 37 | 1.2.3.3 | Definir el formato y la validación del Excel |  | 1d | 2026-10-02 | 2026-10-02 | 36 |  | Desarrollador backend | Desarrollador backend |
| 38 | 1.2.3.4 | Definir el esquema de seguridad por roles |  | 1d | 2026-10-05 | 2026-10-05 | 37 |  | Desarrollador backend | Desarrollador backend |
| 39 | 1.2.4 | **EDT-1.2.04 · Prototipo de interfaz (UX/UI)** |  | 4d | 2026-09-30 | 2026-10-05 |  |  |  | Desarrollador frontend |
| 40 | 1.2.4.1 | Bocetar dashboard, clientes, ficha 360° y alertas |  | 1d | 2026-09-30 | 2026-09-30 | 33 |  | Desarrollador frontend | Desarrollador frontend |
| 41 | 1.2.4.2 | Bocetar el Centro de Retención y el detalle de caso |  | 1d | 2026-10-01 | 2026-10-01 | 40 |  | Desarrollador frontend | Desarrollador frontend |
| 42 | 1.2.4.3 | Definir la guía visual |  | 1d | 2026-10-02 | 2026-10-02 | 41 |  | Desarrollador frontend | Desarrollador frontend |
| 43 | 1.2.4.4 | Probar el prototipo con administradora y recepcionista |  | 1d | 2026-10-05 | 2026-10-05 | 42 |  | Desarrollador frontend | Desarrollador frontend |
| 44 | 1.2.5 | **EDT-1.2.05 · Reglas de negocio de retención** |  | 4d | 2026-09-30 | 2026-10-05 |  |  |  | Analista funcional |
| 45 | 1.2.5.1 | Definir umbrales de riesgo y prioridades (Urgente, Alta, Media, Baja) |  | 1d | 2026-09-30 | 2026-09-30 | 33 | 1d | Analista funcional | Analista funcional |
| 46 | 1.2.5.2 | Definir motivos de riesgo y acciones sugeridas |  | 1d | 2026-10-01 | 2026-10-01 | 45 | 1d | Analista funcional | Analista funcional |
| 47 | 1.2.5.3 | Definir beneficios, plantillas y reglas de contacto |  | 1d | 2026-10-02 | 2026-10-02 | 46 | 1d | Analista funcional | Analista funcional |
| 48 | 1.2.5.4 | H1 · Requisitos y diseño aprobados | milestone | 0d | 2026-10-05 | 2026-10-05 | 47, 38, 43 |  |  | Analista funcional |
| 49 | 1.3 | **Datos y modelo predictivo** |  | 23d | 2026-10-06 | 2026-11-06 |  |  |  |  |
| 50 | 1.3.1 | **EDT-1.3.01 · Registro operacional Excel normalizado** |  | 3d | 2026-10-06 | 2026-10-09 |  |  |  | Científico de datos |
| 51 | 1.3.1.1 | Definir la hoja y las 25 columnas del registro |  | 1d | 2026-10-06 | 2026-10-06 | 48 |  | Científico de datos | Científico de datos |
| 52 | 1.3.1.2 | Normalizar formatos de fecha, montos y códigos |  | 1d | 2026-10-07 | 2026-10-07 | 51 |  | Científico de datos | Científico de datos |
| 53 | 1.3.1.3 | Validar la plantilla con la recepcionista |  | 1d | 2026-10-09 | 2026-10-09 | 52 |  | Científico de datos | Científico de datos |

| ID | WBS | Task | Type | Duration | Start | Finish | Predecessors | Total slack | Resources | Text1 |
| --- | --- | --- | --- | --- | --- | --- | --- | --- | --- | --- |
| 54 | 1.3.2 | **EDT-1.3.02 · Dataset depurado y calidad de datos** |  | 4d | 2026-10-12 | 2026-10-15 |  |  |  | Científico de datos |
| 55 | 1.3.2.1 | Detectar duplicados, nulos y valores atípicos |  | 1d | 2026-10-12 | 2026-10-12 | 53 |  | Científico de datos | Científico de datos |
| 56 | 1.3.2.2 | Corregir o descartar registros inválidos |  | 1d | 2026-10-13 | 2026-10-13 | 55 |  | Científico de datos | Científico de datos |
| 57 | 1.3.2.3 | Anonimizar datos personales para el entrenamiento |  | 1d | 2026-10-14 | 2026-10-14 | 56 |  | Científico de datos | Científico de datos |
| 58 | 1.3.2.4 | Emitir el reporte de calidad de datos |  | 1d | 2026-10-15 | 2026-10-15 | 57 |  | Científico de datos | Científico de datos |
| 59 | 1.3.3 | **EDT-1.3.03 · Ingeniería de características** |  | 5d | 2026-10-16 | 2026-10-22 |  |  |  | Científico de datos |
| 60 | 1.3.3.1 | Consolidar atenciones por cliente |  | 1d | 2026-10-16 | 2026-10-16 | 58 |  | Científico de datos | Científico de datos |
| 61 | 1.3.3.2 | Calcular recencia, frecuencia, gasto y score RFM |  | 2d | 2026-10-19 | 2026-10-20 | 60 |  | Científico de datos | Científico de datos |
| 62 | 1.3.3.3 | Definir la variable de abandono (más de 120 días sin visita) |  | 1d | 2026-10-21 | 2026-10-21 | 61 |  | Científico de datos | Científico de datos |
| 63 | 1.3.3.4 | Codificar variables categóricas |  | 1d | 2026-10-22 | 2026-10-22 | 62 |  | Científico de datos | Científico de datos |
| 64 | 1.3.4 | **EDT-1.3.04 · Modelo XGBoost entrenado** |  | 7d | 2026-10-23 | 2026-11-02 |  |  |  | Científico de datos |
| 65 | 1.3.4.1 | Separar datos de entrenamiento y prueba |  | 1d | 2026-10-23 | 2026-10-23 | 63 |  | Científico de datos | Científico de datos |
| 66 | 1.3.4.2 | Entrenar un modelo base |  | 2d | 2026-10-26 | 2026-10-27 | 65 |  | Científico de datos | Científico de datos |
| 67 | 1.3.4.3 | Optimizar hiperparámetros con validación cruzada |  | 3d | 2026-10-28 | 2026-10-30 | 66 |  | Científico de datos | Científico de datos |
| 68 | 1.3.4.4 | Definir umbrales de riesgo bajo, medio y alto |  | 1d | 2026-11-02 | 2026-11-02 | 67 |  | Científico de datos | Científico de datos |
| 69 | 1.3.5 | **EDT-1.3.05 · Evaluación, interpretabilidad y empaquetado** |  | 4d | 2026-11-03 | 2026-11-06 |  |  |  | Científico de datos |
| 70 | 1.3.5.1 | Calcular métricas y matriz de confusión |  | 1d | 2026-11-03 | 2026-11-03 | 68 |  | Científico de datos | Científico de datos |
| 71 | 1.3.5.2 | Explicar las variables con SHAP |  | 1d | 2026-11-04 | 2026-11-04 | 70 |  | Científico de datos | Científico de datos |
| 72 | 1.3.5.3 | Validar resultados con clientes conocidos por la dueña |  | 1d | 2026-11-05 | 2026-11-05 | 71 |  | Científico de datos; Dueña (patrocinadora) | Científico de datos, Dueña (patrocinadora) |
| 73 | 1.3.5.4 | Serializar modelo y metadatos |  | 1d | 2026-11-06 | 2026-11-06 | 72 |  | Científico de datos | Científico de datos |
| 74 | 1.3.5.5 | H2 · Modelo predictivo validado | milestone | 0d | 2026-11-06 | 2026-11-06 | 73 |  |  | Científico de datos |
| 75 | 1.4 | **Backend e integración** |  | 27d | 2026-10-06 | 2026-11-12 |  |  |  |  |
| 76 | 1.4.1 | **EDT-1.4.01 · Base de datos SQLite** |  | 3d | 2026-10-06 | 2026-10-09 |  | 2d |  | Desarrollador backend |
| 77 | 1.4.1.1 | Crear tablas de clientes y atenciones |  | 1d | 2026-10-06 | 2026-10-06 | 48 | 2d | Desarrollador backend | Desarrollador backend |
| 78 | 1.4.1.2 | Crear tablas de predicciones y sincronización |  | 1d | 2026-10-07 | 2026-10-07 | 77 | 2d | Desarrollador backend | Desarrollador backend |
| 79 | 1.4.1.3 | Crear índices y datos iniciales |  | 1d | 2026-10-09 | 2026-10-09 | 78 | 2d | Desarrollador backend | Desarrollador backend |

| ID | WBS | Task | Duration | Start | Finish | Predecessors | Total slack | Free slack | Resources | Text1 |
| --- | --- | --- | --- | --- | --- | --- | --- | --- | --- | --- |
| 80 | 1.4.2 | **EDT-1.4.02 · Lectura y validación del Excel** | 3d | 2026-10-12 | 2026-10-14 |  | 2d |  |  | Desarrollador backend |
| 81 | 1.4.2.1 | Leer la hoja del registro y mapear columnas | 1d | 2026-10-12 | 2026-10-12 | 79, 53 | 2d |  | Desarrollador backend | Desarrollador backend |
| 82 | 1.4.2.2 | Validar tipos y campos obligatorios | 1d | 2026-10-13 | 2026-10-13 | 81 | 2d |  | Desarrollador backend | Desarrollador backend |
| 83 | 1.4.2.3 | Registrar errores por fila | 1d | 2026-10-14 | 2026-10-14 | 82 | 2d |  | Desarrollador backend | Desarrollador backend |
| 84 | 1.4.3 | **EDT-1.4.03 · Sincronización automática** | 3d | 2026-10-15 | 2026-10-19 |  | 2d |  |  | Desarrollador backend |
| 85 | 1.4.3.1 | Vigilar cambios del archivo cada 30 s | 1d | 2026-10-15 | 2026-10-15 | 83 | 2d |  | Desarrollador backend | Desarrollador backend |
| 86 | 1.4.3.2 | Detectar cambios mediante hash | 1d | 2026-10-16 | 2026-10-16 | 85 | 2d |  | Desarrollador backend | Desarrollador backend |
| 87 | 1.4.3.3 | Cargar solo lo nuevo y guardar historial de sincronizaciones | 1d | 2026-10-19 | 2026-10-19 | 86 | 2d |  | Desarrollador backend | Desarrollador backend |
| 88 | 1.4.4 | **EDT-1.4.04 · Predicción y alertas** | 4d | 2026-11-09 | 2026-11-12 |  |  |  |  | Desarrollador backend |
| 89 | 1.4.4.1 | Aplicar la ingeniería de características del modelo | 1d | 2026-11-09 | 2026-11-09 | 87, 74 |  |  | Desarrollador backend; Científico de datos | Desarrollador backend, Científico de datos |
| 90 | 1.4.4.2 | Invocar el modelo y guardar predicciones con historial | 1d | 2026-11-10 | 2026-11-10 | 89 |  |  | Desarrollador backend | Desarrollador backend |
| 91 | 1.4.4.3 | Generar alertas por riesgo e inactividad (90 y 120 días) | 1d | 2026-11-11 | 2026-11-11 | 90 |  |  | Desarrollador backend | Desarrollador backend |
| 92 | 1.4.4.4 | Detectar nuevas alertas por cambio de estado | 1d | 2026-11-12 | 2026-11-12 | 91 |  |  | Desarrollador backend | Desarrollador backend |
| 93 | 1.4.5 | **EDT-1.4.05 · API REST y autenticación** | 6d | 2026-10-20 | 2026-10-27 |  | 2d |  |  | Desarrollador backend |
| 94 | 1.4.5.1 | Endpoints de clientes, dashboard y alertas | 2d | 2026-10-20 | 2026-10-21 | 87 | 2d |  | Desarrollador backend | Desarrollador backend |
| 95 | 1.4.5.2 | Endpoints de modelo y sincronización | 1d | 2026-10-22 | 2026-10-22 | 94 | 2d |  | Desarrollador backend | Desarrollador backend |
| 96 | 1.4.5.3 | Autenticación por token y roles, sin credenciales por defecto | 2d | 2026-10-23 | 2026-10-26 | 95 | 2d |  | Desarrollador backend | Desarrollador backend |
| 97 | 1.4.5.4 | Documentar la API | 1d | 2026-10-27 | 2026-10-27 | 96 | 2d |  | Desarrollador backend | Desarrollador backend |
| 98 | 1.5 | **Aplicación web CRM** | 27d | 2026-10-12 | 2026-11-17 |  | 2d |  |  |  |
| 99 | 1.5.1 | **EDT-1.5.01 · Inicio de sesión y navegación** | 3d | 2026-10-12 | 2026-10-14 |  | 11d |  |  | Desarrollador frontend |
| 100 | 1.5.1.1 | Pantalla de inicio de sesión | 1d | 2026-10-12 | 2026-10-12 | 79, 43 | 11d |  | Desarrollador frontend | Desarrollador frontend |
| 101 | 1.5.1.2 | Menú lateral y rutas protegidas | 1d | 2026-10-13 | 2026-10-13 | 100 | 11d |  | Desarrollador frontend | Desarrollador frontend |
| 102 | 1.5.1.3 | Cierre de sesión | 1d | 2026-10-14 | 2026-10-14 | 101 | 11d | 9d | Desarrollador frontend | Desarrollador frontend |
| 103 | 1.5.2 | **EDT-1.5.02 · Dashboard analítico** | 5d | 2026-10-28 | 2026-11-03 |  | 2d |  |  | Desarrollador frontend |
| 104 | 1.5.2.1 | Indicadores de clientes y riesgo | 2d | 2026-10-28 | 2026-10-29 | 102, 97 | 2d |  | Desarrollador frontend | Desarrollador frontend |
| 105 | 1.5.2.2 | Distribución por nivel de riesgo y estado temporal | 2d | 2026-10-30 | 2026-11-02 | 104 | 2d |  | Desarrollador frontend | Desarrollador frontend |
| 106 | 1.5.2.3 | Evolución de alertas en el tiempo | 1d | 2026-11-03 | 2026-11-03 | 105 | 2d |  | Desarrollador frontend | Desarrollador frontend |

| ID | WBS | Task | Duration | Start | Finish | Predecessors | Total slack | Resources | Text1 |
| --- | --- | --- | --- | --- | --- | --- | --- | --- | --- |
| 107 | 1.5.3 | **EDT-1.5.03 · Clientes y ficha 360°** | 6d | 2026-11-04 | 2026-11-11 |  | 2d |  | Desarrollador frontend |
| 108 | 1.5.3.1 | Listado con filtros y exportación | 2d | 2026-11-04 | 2026-11-05 | 106 | 2d | Desarrollador frontend | Desarrollador frontend |
| 109 | 1.5.3.2 | Ficha 360° con historial, gasto y última visita | 3d | 2026-11-06 | 2026-11-10 | 108 | 2d | Desarrollador frontend | Desarrollador frontend |
| 110 | 1.5.3.3 | Barra de inactividad e historial de predicciones | 1d | 2026-11-11 | 2026-11-11 | 109 | 2d | Desarrollador frontend | Desarrollador frontend |
| 111 | 1.5.4 | **EDT-1.5.04 · Centro de alertas y vistas del sistema** | 4d | 2026-11-12 | 2026-11-17 |  | 2d |  | Desarrollador frontend |
| 112 | 1.5.4.1 | Listado de alertas por prioridad y marcado de revisadas | 2d | 2026-11-12 | 2026-11-13 | 110 | 2d | Desarrollador frontend | Desarrollador frontend |
| 113 | 1.5.4.2 | Estado e historial de sincronizaciones y sincronización manual | 1d | 2026-11-16 | 2026-11-16 | 112 | 2d | Desarrollador frontend | Desarrollador frontend |
| 114 | 1.5.4.3 | Métricas del modelo y variables más importantes | 1d | 2026-11-17 | 2026-11-17 | 113 | 2d | Desarrollador frontend | Desarrollador frontend |
| 115 | 1.6 | **Módulo de retención** | 25d | 2026-10-28 | 2026-12-01 |  |  |  |  |
| 116 | 1.6.1 | **EDT-1.6.01 · Modelo de datos de retención** | 3d | 2026-10-28 | 2026-10-30 |  | 9d |  | Desarrollador backend |
| 117 | 1.6.1.1 | Tablas de casos, acciones e historial | 1d | 2026-10-28 | 2026-10-28 | 97 | 9d | Desarrollador backend | Desarrollador backend |
| 118 | 1.6.1.2 | Tablas de plantillas, beneficios, cupones y campañas | 1d | 2026-10-29 | 2026-10-29 | 117 | 9d | Desarrollador backend | Desarrollador backend |
| 119 | 1.6.1.3 | Preferencias de contacto y configuración | 1d | 2026-10-30 | 2026-10-30 | 118 | 9d | Desarrollador backend | Desarrollador backend |
| 120 | 1.6.2 | **EDT-1.6.02 · Motor de casos y recuperación** | 5d | 2026-11-13 | 2026-11-19 |  |  |  | Desarrollador backend |
| 121 | 1.6.2.1 | Evaluar clientes tras cada sincronización | 1d | 2026-11-13 | 2026-11-13 | 119, 92 |  | Desarrollador backend | Desarrollador backend |
| 122 | 1.6.2.2 | Asignar prioridad, motivo y siguiente mejor acción | 2d | 2026-11-16 | 2026-11-17 | 121 |  | Desarrollador backend; Científico de datos | Desarrollador backend, Científico de datos |
| 123 | 1.6.2.3 | Evitar duplicados y subir prioridad si el riesgo empeora | 1d | 2026-11-18 | 2026-11-18 | 122 |  | Desarrollador backend | Desarrollador backend |
| 124 | 1.6.2.4 | Detectar nuevas visitas y registrar el ingreso recuperado | 1d | 2026-11-19 | 2026-11-19 | 123 |  | Desarrollador backend | Desarrollador backend |
| 125 | 1.6.3 | **EDT-1.6.03 · Centro de Retención** | 5d | 2026-11-20 | 2026-11-26 |  |  |  | Desarrollador frontend |
| 126 | 1.6.3.1 | Bandeja de casos por prioridad y estado | 2d | 2026-11-20 | 2026-11-23 | 124, 114 |  | Desarrollador frontend | Desarrollador frontend |
| 127 | 1.6.3.2 | Detalle del caso con historial y acciones | 2d | 2026-11-24 | 2026-11-25 | 126 |  | Desarrollador frontend | Desarrollador frontend |
| 128 | 1.6.3.3 | Cambio de estado y seguimiento | 1d | 2026-11-26 | 2026-11-26 | 127 |  | Desarrollador frontend | Desarrollador frontend |
| 129 | 1.6.4 | **EDT-1.6.04 · Contacto por WhatsApp** | 3d | 2026-11-27 | 2026-12-01 |  |  |  | Desarrollador frontend |
| 130 | 1.6.4.1 | Generar el mensaje desde la plantilla | 1d | 2026-11-27 | 2026-11-27 | 128 |  | Desarrollador frontend | Desarrollador frontend |
| 131 | 1.6.4.2 | Abrir WhatsApp con el mensaje editable | 1d | 2026-11-30 | 2026-11-30 | 130 |  | Desarrollador frontend | Desarrollador frontend |
| 132 | 1.6.4.3 | Verificar consentimiento y registrar la respuesta | 1d | 2026-12-01 | 2026-12-01 | 131 |  | Desarrollador frontend | Desarrollador frontend |

| ID | WBS | Task | Type | Duration | Start | Finish | Predecessors | Total slack | Free slack | Resources | Text1 |
| --- | --- | --- | --- | --- | --- | --- | --- | --- | --- | --- | --- |
| 133 | 1.7 | **Pruebas y calidad** |  | 53d | 2026-09-30 | 2026-12-16 |  | 1d |  |  |  |
| 134 | 1.7.1 | **EDT-1.7.01 · Plan y casos de prueba** |  | 4d | 2026-09-30 | 2026-10-05 |  | 35d |  |  | QA y capacitación |
| 135 | 1.7.1.1 | Redactar el plan de pruebas |  | 1d | 2026-09-30 | 2026-09-30 | 33 | 35d |  | QA y capacitación | QA y capacitación |
| 136 | 1.7.1.2 | Diseñar casos de prueba por requisito |  | 2d | 2026-10-01 | 2026-10-02 | 135 | 35d |  | QA y capacitación | QA y capacitación |
| 137 | 1.7.1.3 | Preparar datos de prueba anonimizados |  | 1d | 2026-10-05 | 2026-10-05 | 136 | 35d | 15d | QA y capacitación | QA y capacitación |
| 138 | 1.7.2 | **EDT-1.7.02 · Pruebas unitarias e integración** |  | 27d | 2026-10-28 | 2026-12-03 |  |  |  |  | QA y capacitación |
| 139 | 1.7.2.1 | Automatizar pruebas del backend |  | 3d | 2026-10-28 | 2026-10-30 | 97, 137 | 20d | 14d | QA y capacitación | QA y capacitación |
| 140 | 1.7.2.2 | Probar la integración con el Excel y el modelo |  | 2d | 2026-11-20 | 2026-11-23 | 139, 124 | 6d |  | QA y capacitación | QA y capacitación |
| 141 | 1.7.2.3 | Corregir defectos encontrados |  | 2d | 2026-12-02 | 2026-12-03 | 140, 132, 114 |  |  | QA y capacitación | QA y capacitación |
| 142 | 1.7.2.4 | H3 · Sistema integrado | milestone | 0d | 2026-12-03 | 2026-12-03 | 141 |  |  |  | QA y capacitación |
| 143 | 1.7.3 | **EDT-1.7.03 · Pruebas integrales del sistema** |  | 4d | 2026-12-04 | 2026-12-11 |  |  |  |  | QA y capacitación |
| 144 | 1.7.3.1 | Ejecutar escenarios de extremo a extremo |  | 2d | 2026-12-04 | 2026-12-07 | 142 |  |  | QA y capacitación | QA y capacitación |
| 145 | 1.7.3.2 | Probar rendimiento con el volumen real |  | 1d | 2026-12-10 | 2026-12-10 | 144 |  |  | QA y capacitación | QA y capacitación |
| 146 | 1.7.3.3 | Probar seguridad, respaldo y restauración |  | 1d | 2026-12-11 | 2026-12-11 | 145 |  |  | QA y capacitación | QA y capacitación |
| 147 | 1.7.4 | **EDT-1.7.04 · Pruebas de aceptación (UAT)** |  | 3d | 2026-12-14 | 2026-12-16 |  | 1d |  |  | QA y capacitación |
| 148 | 1.7.4.1 | Recorrer los 7 módulos con la administradora |  | 1d | 2026-12-14 | 2026-12-14 | 146 | 1d |  | QA y capacitación; Administradora | QA y capacitación, Administradora |
| 149 | 1.7.4.2 | Registrar y resolver observaciones |  | 1d | 2026-12-15 | 2026-12-15 | 148 | 1d |  | QA y capacitación | QA y capacitación |
| 150 | 1.7.4.3 | Firmar el acta de aceptación de usuario |  | 1d | 2026-12-16 | 2026-12-16 | 149 | 1d |  | QA y capacitación; Administradora | QA y capacitación, Administradora |
| 151 | 1.8 | **Despliegue y transición** |  | 26d | 2026-12-02 | 2027-01-12 |  |  |  |  |  |
| 152 | 1.8.1 | **EDT-1.8.01 · Entorno de producción y respaldo** |  | 4d | 2026-12-14 | 2026-12-17 |  |  |  |  | Desarrollador backend |
| 153 | 1.8.1.1 | Instalar dependencias y el sistema |  | 1d | 2026-12-14 | 2026-12-14 | 146 |  |  | Desarrollador backend | Desarrollador backend |
| 154 | 1.8.1.2 | Configurar usuarios por rol, claves, ruta del Excel y fecha de corte real |  | 1d | 2026-12-15 | 2026-12-15 | 153 |  |  | Desarrollador backend | Desarrollador backend |
| 155 | 1.8.1.3 | Crear el script de inicio de operación |  | 1d | 2026-12-16 | 2026-12-16 | 154 |  |  | Desarrollador backend | Desarrollador backend |
| 156 | 1.8.1.4 | Programar y probar el respaldo diario |  | 1d | 2026-12-17 | 2026-12-17 | 155 |  |  | Desarrollador backend | Desarrollador backend |

| ID | WBS | Task | Type | Duration | Start | Finish | Predecessors | Total slack | Resources |
| --- | --- | --- | --- | --- | --- | --- | --- | --- | --- |
| 157 | 1.8.2 | **EDT-1.8.02 · Documentación y manuales** |  | 4d | 2026-12-02 | 2026-12-07 |  | 6d |  |
| 158 | 1.8.2.1 | Redactar el README técnico y la guía de instalación |  | 1d | 2026-12-02 | 2026-12-02 | 132 | 6d | Analista funcional |
| 159 | 1.8.2.2 | Redactar el manual de usuario por rol |  | 2d | 2026-12-03 | 2026-12-04 | 158 | 6d | Analista funcional |
| 160 | 1.8.2.3 | Elaborar la guía rápida «qué hacer con una alerta» |  | 1d | 2026-12-07 | 2026-12-07 | 159 | 6d | Analista funcional |
| 161 | 1.8.3 | **EDT-1.8.03 · Capacitación por rol** |  | 4d | 2026-12-18 | 2026-12-23 |  |  |  |
| 162 | 1.8.3.1 | Taller para administradora y dueña |  | 1d | 2026-12-18 | 2026-12-18 | 156, 160, 150 |  | QA y capacitación; Administradora |
| 163 | 1.8.3.2 | Taller para recepcionista |  | 1d | 2026-12-21 | 2026-12-21 | 162 |  | QA y capacitación |
| 164 | 1.8.3.3 | Taller para cosmiatras |  | 1d | 2026-12-22 | 2026-12-22 | 163 |  | QA y capacitación |
| 165 | 1.8.3.4 | Evaluación práctica por usuaria |  | 1d | 2026-12-23 | 2026-12-23 | 164 |  | QA y capacitación |
| 166 | 1.8.4 | **EDT-1.8.04 · Go-live y estabilización** |  | 10d | 2026-12-24 | 2027-01-08 |  |  |  |
| 167 | 1.8.4.1 | Comunicar el go-live y la ventana de corte |  | 1d | 2026-12-24 | 2026-12-24 | 165 |  | Director del proyecto |
| 168 | 1.8.4.2 | H4 · Puesta en producción (go-live) | milestone | 0d | 2026-12-24 | 2026-12-24 | 167 |  |  |
| 169 | 1.8.4.3 | Brindar soporte asistido y atender incidentes |  | 8d | 2026-12-28 | 2027-01-07 | 168 |  | Desarrollador backend; Desarrollador frontend; QA y capacitación |
| 170 | 1.8.4.4 | Ajustar reglas y medir la adopción |  | 1d | 2027-01-08 | 2027-01-08 | 169 |  | Analista funcional |
| 171 | 1.8.5 | **EDT-1.8.05 · Transferencia a la operación** |  | 2d | 2027-01-11 | 2027-01-12 |  |  |  |
| 172 | 1.8.5.1 | Entregar accesos, código, respaldos y documentación |  | 1d | 2027-01-11 | 2027-01-11 | 170 |  | Director del proyecto |
| 173 | 1.8.5.2 | Firmar el acta de transferencia |  | 1d | 2027-01-12 | 2027-01-12 | 172 |  | Director del proyecto |

Notes:
- 157: Text1: Analista funcional
- 158: Text1: Analista funcional
- 159: Text1: Analista funcional
- 160: Text1: Analista funcional
- 161: Text1: QA y capacitación
- 162: Text1: QA y capacitación, Administradora
- 163: Text1: QA y capacitación
- 164: Text1: QA y capacitación
- 165: Text1: QA y capacitación
- 166: Text1: Director del proyecto
- 167: Text1: Director del proyecto
- 168: Text1: Director del proyecto
- 169: Text1: Desarrollador backend, Desarrollador frontend, QA y capacitación
- 170: Text1: Analista funcional
- 171: Text1: Director del proyecto
- 172: Text1: Director del proyecto
- 173: Text1: Director del proyecto
